# TrilinosRelease5

Schedule from MS Project, 2004-11-24 to 2005-03-01, scheduled back from the finish, A marks actual dates.
Sandia National Labs

## Calendars

- Standard: Mon-Fri 08:00-12:00, 13:00-17:00; Sat-Sun off. Exceptions (off unless hours are given): 2004-11-25 to 2004-11-26, 2004-12-24, 2004-12-27 to 2004-12-31, 2005-01-03.

## Schedule

| ID | WBS | Task | Type | Duration | Start | Finish | Predecessors | Complete | Remaining | Total slack | Free slack | Constraint |
| --- | --- | --- | --- | --- | --- | --- | --- | --- | --- | --- | --- | --- |
| 1 | 1 | Verify which packages are to be included in the release |  | 30min | 2004-11-24 16:30 A | 2004-12-02 16:51 A |  | 100% |  |  |  | finish no later than 2004-12-02 17:00 |
| 2 | 2 | Figure out which packages need to go through the copyright process |  | 30min | 2004-11-29 16:30 A | 2004-12-02 17:00 A | 1 | 100% |  |  |  | finish no later than 2004-12-02 17:00 |
| 3 | 3 | Complete copyright process for packages that are to be released and are not copyrighted |  | 20d | 2005-01-12 08:00 A | 2005-02-08 17:00 | 2 | 5% | 19d | 0d |  | finish no later than 2005-02-08 17:00 |
| 4 | 4 | Send note to developers about updating compiler check list in configure.ac |  | 30min | 2004-12-21 10:30 | 2004-12-21 11:00 |  |  |  | 16.38d | 0d | as late as possible |
| 5 | 5 | Update compiler selection list |  | 5h | 2004-12-23 11:00 | 2004-12-23 17:00 | 4FS+2d |  |  | 16.38d | 0d | as late as possible |
| 6 | 6 | Do initial verification of builds on important platforms |  | 16d | 2005-01-04 08:00 | 2005-01-25 17:00 | 1, 5 |  |  | 15.02d | 0d | finish no later than 2005-01-25 17:00 |
| 7 | 7 | Implement make check |  | 4d | 2004-12-13 08:00 | 2004-12-16 17:00 |  |  |  | 11.81d | 0d | finish no later than 2004-12-16 17:00 |
| 8 | 8 | Clarify and rework TSF package structure - not necessary for this release |  | 2d | 2004-12-08 08:00 A | 2004-12-09 17:00 A |  | 100% |  |  |  | finish no later than 2004-12-09 17:00 |
| 9 | 9 | Autotool Pliris |  | 2d | 2004-11-30 08:00 A | 2004-12-10 17:00 |  | 30% | 1.4d | 0d |  | finish no later than 2004-12-10 17:00 |
| 10 | 10 | **Implement Software Quality Plan requirements** |  | 3d | 2005-01-27 08:00 | 2005-01-31 17:00 |  |  |  | 36.06d | 0d | as late as possible |
| 11 | 10.1 | Create SQP checklists |  | 3d | 2005-01-27 08:00 | 2005-01-31 17:00 |  |  |  | 36.06d | 0d | finish no later than 2005-02-05 17:00 |
| 12 | 11 | Document that requirements are satisfied (package level) |  | 3d | 2005-02-04 08:00 | 2005-02-08 17:00 |  |  |  | 42.06d | 0d | finish no later than 2005-02-08 17:00 |
| 13 | 12 | Packages need to support make dist |  | 3d | 2004-12-14 08:00 A | 2004-12-16 17:00 A |  | 100% |  |  |  | finish no later than 2004-12-16 17:00 |
| 14 | 13 | Send email about repository freeze |  | 30min | 2005-01-10 08:00 | 2005-01-10 08:30 |  |  |  | 23.06d | 0d | start no later than 2005-01-10 08:00 |
| 15 | 14 | Freeze repository | milestone | 0d | 2005-02-01 08:00 | 2005-02-01 08:00 | 1, 6, 7, 9, 10SS, 11, 13, 14, 5, 8 |  |  | 7.02d | 0d | start no later than 2005-02-01 08:00 |
| 16 | 15 | Create 5.0 release branch |  | 2.5h | 2005-02-01 14:00 | 2005-02-01 16:30 | 15 |  |  | 7.64d | 0d | finish no later than 2005-02-01 17:00 |
| 17 | 16 | Send note to dev list including name of release branch |  | 30min | 2005-02-01 16:30 | 2005-02-01 17:00 | 16 |  |  | 0d |  | must finish on 2005-02-01 17:00 |
| 18 | 17 | Sierra Verification testing |  | 8d | 2005-02-02 08:00 | 2005-02-11 17:00 | 17 |  |  | 0d |  | finish no later than 2005-02-11 17:00 |
| 19 | 18 | Alegra Verification testing |  | 16d | 2005-02-03 08:00 | 2005-02-24 17:00 | 17, 18SS+1d |  |  | 0d |  | finish no later than 2005-02-24 17:00 |
| 20 | 19 | Set up the Trilinos 5.0 website |  | 2d | 2005-02-02 15:24 | 2005-02-04 15:24 | 17 |  |  | 0.8d | 0d | finish no later than 2005-02-04 15:24 |
| 21 | 20 | Set up 5.0 test harness runs |  | 7d | 2005-02-03 08:00 | 2005-02-11 17:00 | 16 |  |  | 8.71d | 0d | finish no later than 2005-02-11 17:00 |
| 22 | 21 | Send request to developers for release notes |  | 30min | 2005-02-02 08:00 | 2005-02-02 08:30 | 17 |  |  | 0d |  | start no later than 2005-02-02 08:00 |
| 23 | 22 | Add release notes to repository, tarball and web |  | 1h | 2005-02-25 16:00 | 2005-02-25 17:00 | 22FS+3d, 20 |  |  | 14.81d | 0d | finish no later than 2005-02-25 17:00 |
| 24 | 23 | Send note to dev list to encourage package developers to send a note to their user lists about new release features |  | 30min | 2005-02-25 08:00 | 2005-02-25 08:30 | 18, 19 |  |  | 0d |  | finish no later than 2005-02-25 08:30 |
| 25 | 24 | Create preliminary version of distribution tarball |  | 3.5h | 2005-02-02 08:00 | 2005-02-02 11:30 | 16, 13 |  |  | 7.71d | 0d | finish no later than 2005-02-02 11:30 |
| 26 | 25 | Obtain permission for release from Project Leader |  | 3h | 2005-02-25 14:30 | 2005-02-28 08:30 | 25 |  |  | 24.96d | 0d | as late as possible |
| 27 | 26 | Regenerate tarball and post on 5.0 website |  | 1.5h | 2005-02-28 08:30 | 2005-02-28 10:00 | 18, 19, 26 |  |  | 1.06d | 0d | finish no later than 2005-02-28 10:00 |
| 28 | 27 | Announce release via Trilinos-Announce list | milestone | 30min | 2005-03-01 16:30 | 2005-03-01 17:00 | 27 |  |  | 2.75d | 0d | as late as possible |

Notes:
- 1: Send a note to dev list. Include a note about copyrighting. / amesos / anasazi (new) / aztecoo / belos (new) / didasko (new - copyright) / epetra / epetraext / ifpack / kokkos / komplex / loca (copyright) / meros (new) / ml / new_package / nox / pliris (new) / PyTrilinos (new - copyright) / teuchos / Thyra (new, copyright) / triutils
- 2: Contact developers as necessary / PyTrilinos / Didasko / Thyra / Loca / archetypo?
- 8: A meeting occured in which a new package name was selected for what is currently TSFCore and TSFExtended. Kevin L will be the project leader. / Per Ross B., the reworked TSF package will not be included in Release 5.
- 9: The compile process is a little more compilcatied than I thought. Some files need to be compiled 4 different ways for four different levels of precision.
- 13: Contact packages sequentially about verifying their portion of tarball for best results. / We will create the final tarball later, but the initial verification of make dist support is complete. Only a handful of changes were necessary.

| ID | WBS | Task | Duration | Start | Finish | Total slack | Free slack | Constraint |
| --- | --- | --- | --- | --- | --- | --- | --- | --- |
| 29 | 28 | **SQP checkup** | 53.38d | 2004-11-30 08:00 | 2005-02-22 11:00 | 1.06d | 0d | as late as possible |
| 30 | 28.1 | SQP checkup 1 | 3h | 2004-11-30 08:00 | 2004-11-30 11:00 | 1.06d | 0d | start no later than 2004-11-30 08:00 |
| 31 | 28.2 | SQP checkup 2 | 3h | 2004-12-14 08:00 | 2004-12-14 11:00 | 11.06d | 0d | start no later than 2004-12-14 08:00 |
| 32 | 28.3 | SQP checkup 3 | 3h | 2005-01-11 08:00 | 2005-01-11 11:00 | 24.06d | 0d | start no later than 2005-01-11 08:00 |
| 33 | 28.4 | SQP checkup 4 | 3h | 2005-01-25 08:00 | 2005-01-25 11:00 | 34.06d | 0d | start no later than 2005-01-25 08:00 |
| 34 | 28.5 | SQP checkup 5 | 3h | 2005-02-08 08:00 | 2005-02-08 11:00 | 44.06d | 0d | start no later than 2005-02-08 08:00 |
| 35 | 28.6 | SQP checkup 6 | 3h | 2005-02-22 08:00 | 2005-02-22 11:00 | 54.06d | 0d | start no later than 2005-02-22 08:00 |
